# T12ProjectSchedule_V3

Schedule from MS Project, 2015-03-24 to 2015-06-05.
Hewlett-Packard

## Calendars

- Standard: Mon-Sat 08:00-12:00, 13:00-17:00; Sun off.

## Resources

| Resource |
| --- |
| Travis |
| Luis |
| Kris |
| Brandon |
| Dr. Morris |

## Schedule

| ID | WBS | Task | Type | Duration | Start | Finish | Predecessors | Total slack | Resources | Work |
| --- | --- | --- | --- | --- | --- | --- | --- | --- | --- | --- |
| 1 | 1 | **MSGT Experiment** |  | 45d | 2015-03-24 | 2015-05-14 |  | 0d |  | 432h |
| 2 | 1.1 | **Design MSGT** |  | 18d | 2015-03-24 | 2015-04-13 |  |  |  | 144h |
| 3 | 1.1.1 | Create Board Schematic | manual | 7d | 2015-03-24 | 2015-03-31 |  |  | Travis | 56h |
| 4 | 1.1.2 | Revise Board Schematic | manual | 6d | 2015-04-01 | 2015-04-07 | 3 |  | Travis | 48h |
| 5 | 1.1.3 | Create Board Layout | manual | 2d | 2015-04-08 | 2015-04-09 | 4 |  | Travis | 16h |
| 6 | 1.1.4 | Revise Board Layout | manual | 3d | 2015-04-10 | 2015-04-12 | 5 |  | Travis | 24h |
| 7 | 1.1.5 | No ERC or DRC errors | milestone, manual | 0d | 2015-04-13 | 2015-04-13 | 6 |  | Travis |  |
| 8 | 1.2 | Write MSGT Experiment Manual | manual | 10d | 2015-03-24 | 2015-04-03 |  |  | Travis | 80h |
| 9 | 1.3 | Write MSGT Instructors Manual | manual | 5d | 2015-05-10 | 2015-05-14 | 15, 35, 55 |  | Brandon | 40h |
| 10 | 1.4 | **Testplan MSGT** |  | 13d | 2015-04-13 | 2015-04-27 |  |  |  | 112h |
| 11 | 1.4.1 | Create Testplan | manual | 7d | 2015-04-13 | 2015-04-19 | 6, 26, 46 |  | Travis | 56h |
| 12 | 1.4.2 | Revise Testplan |  | 7d | 2015-04-20 | 2015-04-27 | 11 | 0d | Luis | 56h |
| 13 | 1.5 | Send to PCB MFGR | milestone, manual | 0d | 2015-04-13 | 2015-04-13 | 6, 26, 46 |  |  |  |
| 14 | 1.6 | Receive board from FAB | milestone, manual | 0d | 2015-04-23 | 2015-04-23 |  |  |  |  |
| 15 | 1.7 | **MSGT Board Bring Up** |  | 7d | 2015-04-23 | 2015-04-30 |  |  |  | 56h |
| 16 | 1.7.1 | Check board fab (shorts) |  | 1d | 2015-04-23 | 2015-04-23 |  | 0d | Travis | 8h |
| 17 | 1.7.2 | Stuff board (solder parts) |  | 1d | 2015-04-24 | 2015-04-24 | 16 | 0d | Travis | 8h |
| 18 | 1.7.3 | check solder (short, etc) |  | 1d | 2015-04-25 | 2015-04-25 | 17 | 0d | Travis | 8h |
| 19 | 1.7.4 | test basic functionality |  | 1d | 2015-04-27 | 2015-04-27 | 18 | 0d | Travis | 8h |
| 20 | 1.7.5 | Debug any issues |  | 3d | 2015-04-28 | 2015-04-30 | 19 | 0d | Travis | 24h |
| 21 | 2 | **ISI Experiment** |  | 45d | 2015-03-24 | 2015-05-14 |  | 0d |  | 640h |
| 22 | 2.1 | **Design ISI Experiment** |  | 18d | 2015-03-24 | 2015-04-13 |  |  |  | 320h |
| 23 | 2.1.1 | Create Board Schematic | manual | 7d | 2015-03-24 | 2015-03-31 |  |  | Kris; Luis | 112h |
| 24 | 2.1.2 | Revise Board Schematic | manual | 3d | 2015-03-31 | 2015-04-02 | 23 |  | Kris; Luis | 48h |
| 25 | 2.1.3 | Create Board Layout | manual | 5d | 2015-04-03 | 2015-04-08 | 24 |  | Kris; Luis | 80h |
| 26 | 2.1.4 | Revise Board Layout | manual | 5d | 2015-04-08 | 2015-04-12 | 25 |  | Kris; Luis | 80h |
| 27 | 2.1.5 | No ERC or DRC errors | milestone, manual | 0d | 2015-04-13 | 2015-04-13 | 6 |  | Kris; Luis |  |
| 28 | 2.2 | Write Experiment Manual ISI | manual | 10d | 2015-03-24 | 2015-04-03 |  |  | Luis; Kris | 160h |
| 29 | 2.3 | Write Instructors Manual ISI | manual | 5d | 2015-05-10 | 2015-05-14 | 35, 55 |  | Travis | 40h |

| ID | WBS | Task | Type | Duration | Start | Finish | Predecessors | Total slack | Resources | Work |
| --- | --- | --- | --- | --- | --- | --- | --- | --- | --- | --- |
| 30 | 2.4 | **Testplan ISI** |  | 10d | 2015-04-13 | 2015-04-23 |  |  |  | 120h |
| 31 | 2.4.1 | Create Testplan | manual | 5d | 2015-04-13 | 2015-04-17 | 6, 26, 46 |  | Kris; Luis | 80h |
| 32 | 2.4.2 | Revise Testplan | manual | 5d | 2015-04-18 | 2015-04-23 | 31 |  | Travis | 40h |
| 33 | 2.5 | Send to PCB MFGR | milestone, manual | 0d | 2015-04-13 | 2015-04-13 | 6, 26, 46 |  |  |  |
| 34 | 2.6 | Receive board from FAB | milestone, manual | 0d | 2015-04-23 | 2015-04-23 |  |  |  |  |
| 35 | 3 | **ISI Board Bring Up** |  | 6d | 2015-05-04 | 2015-05-09 |  |  |  | 48h |
| 36 | 3.1 | Check board fab (shorts) | manual | 1d | 2015-05-04 | 2015-05-04 | 34 |  | Luis | 8h |
| 37 | 3.2 | Stuff board (solder parts) | manual | 1d | 2015-05-05 | 2015-05-05 | 36 |  | Kris | 8h |
| 38 | 3.3 | check solder (short, etc) | manual | 1d | 2015-05-06 | 2015-05-06 | 37 |  | Kris | 8h |
| 39 | 3.4 | test basic functionality | manual | 1d | 2015-05-07 | 2015-05-07 | 38 |  | Luis | 8h |
| 40 | 3.5 | Debug any issues | manual | 2d | 2015-05-08 | 2015-05-09 | 39 |  | Luis | 16h |
| 41 | 4 | **Connector experiment** |  | 45d | 2015-03-24 | 2015-05-14 |  | 0d |  | 440h |
| 42 | 4.1 | **Design Connector Experiment** |  | 18d | 2015-03-24 | 2015-04-13 |  |  |  | 160h |
| 43 | 4.1.1 | Create Board Schematic | manual | 7d | 2015-03-24 | 2015-03-31 |  |  | Brandon | 56h |
| 44 | 4.1.2 | Revise Board Schematic | manual | 3d | 2015-03-31 | 2015-04-02 | 43 |  | Brandon | 24h |
| 45 | 4.1.3 | Create Board Layout | manual | 5d | 2015-04-03 | 2015-04-08 | 44 |  | Brandon | 40h |
| 46 | 4.1.4 | Revise Board Layout | manual | 5d | 2015-04-08 | 2015-04-12 | 45 |  | Brandon | 40h |
| 47 | 4.1.5 | No ERC or DRC errors | milestone, manual | 0d | 2015-04-13 | 2015-04-13 | 6 |  | Brandon |  |
| 48 | 4.2 | Write Experiment Manual Connector | manual | 10d | 2015-03-24 | 2015-04-03 |  |  | Brandon | 80h |
| 49 | 4.3 | Write Instructors Manual Connector | manual | 5d | 2015-05-10 | 2015-05-14 | 15, 35, 55 |  | Kris | 40h |
| 50 | 4.4 | **Testplan Connector** |  | 13d | 2015-04-13 | 2015-04-26 |  |  |  | 112h |
| 51 | 4.4.1 | Create Testplan | manual | 7d | 2015-04-13 | 2015-04-19 | 6, 26, 46 |  | Brandon | 56h |
| 52 | 4.4.2 | Revise Testplan | manual | 7d | 2015-04-20 | 2015-04-26 | 51 |  | Kris | 56h |
| 53 | 4.5 | Send to PCB MFGR | milestone, manual | 0d | 2015-04-13 | 2015-04-13 | 6, 26, 46 |  |  |  |
| 54 | 4.6 | Receive board from FAB | milestone, manual | 0d | 2015-04-23 | 2015-04-23 |  |  |  |  |

| ID | WBS | Task | Type | Duration | Start | Finish | Predecessors | Total slack | Resources | Work |
| --- | --- | --- | --- | --- | --- | --- | --- | --- | --- | --- |
| 55 | 4.7 | **Connector Board Bring Up** |  | 6d | 2015-05-04 | 2015-05-09 |  |  |  | 48h |
| 56 | 4.7.1 | Check board fab (shorts) | manual | 1d | 2015-05-04 | 2015-05-04 | 54 |  | Brandon | 8h |
| 57 | 4.7.2 | Stuff board (solder parts) | manual | 1d | 2015-05-05 | 2015-05-05 | 56 |  | Brandon | 8h |
| 58 | 4.7.3 | check solder (short, etc) | manual | 1d | 2015-05-06 | 2015-05-06 | 57 |  | Brandon | 8h |
| 59 | 4.7.4 | test basic functionality | manual | 1d | 2015-05-07 | 2015-05-07 | 58 |  | Brandon | 8h |
| 60 | 4.7.5 | Debug any issues | manual | 2d | 2015-05-08 | 2015-05-09 | 59 |  | Brandon | 16h |
| 61 | 5 | **Board Testing** |  | 15d | 2015-05-10 | 2015-05-26 |  |  |  | 384h |
| 62 | 5.1 | Alpha Test | manual | 3d | 2015-05-10 | 2015-05-12 | 35, 55, 19 |  | Brandon; Kris; Luis; Travis | 96h |
| 63 | 5.2 | Review/Revise | manual | 1d | 2015-05-13 | 2015-05-13 | 62 |  | Brandon; Kris; Luis; Travis | 32h |
| 64 | 5.3 | Beta Testing | manual | 5d | 2015-05-19 | 2015-05-23 | 66 |  | Brandon; Kris; Luis; Travis | 160h |
| 65 | 5.4 | Sponsor Testing | manual | 3d | 2015-05-24 | 2015-05-26 | 64 |  | Brandon; Kris; Luis; Travis | 96h |
| 66 | 6 | Possible Board Respin | manual | 5d | 2015-05-14 | 2015-05-19 | 63 |  |  |  |
| 67 | 7 | **Prepare Presentation** |  | 6d | 2015-05-27 | 2015-06-02 |  | 0d |  | 192h |
| 68 | 7.1 | **Create Poster** |  | 6d | 2015-05-27 | 2015-06-02 | 65 |  |  | 192h |
| 69 | 7.1.1 | Brainstorm Poster | manual | 1d | 2015-05-27 | 2015-05-27 | 62 |  | Brandon; Kris; Luis; Travis | 32h |
| 70 | 7.1.2 | Create Poster | manual | 2d | 2015-05-28 | 2015-05-29 | 69 |  | Brandon; Kris; Luis; Travis | 64h |
| 71 | 7.1.3 | Review Poster (group) | manual | 1d | 2015-05-30 | 2015-05-30 | 70 |  | Brandon; Kris; Luis; Travis | 32h |
| 72 | 7.1.4 | Advisor review poster | manual | 3d | 2015-05-31 | 2015-06-02 | 71 |  | Dr. Morris | 24h |
| 73 | 7.1.5 | Practice Presentation | manual | 1d | 2015-06-01 | 2015-06-01 |  |  | Brandon; Dr. Morris; Kris; Luis; Travis | 40h |
| 74 | 8 | Presentation | milestone, manual | 0d | 2015-06-05 | 2015-06-05 | 72 |  |  |  |
